Schedule from MS Project, 2015-10-08 to 2015-12-30, A marks actual dates.
Microsoft

## Calendars

- 标准: Mon-Fri 08:00-12:00, 13:00-17:00; Sat-Sun off. Exceptions (off unless hours are given): 2015-10-10 08:30-12:00, 13:30-17:30.

## Resources

| Resource |
| --- |
| 陈志英 |
| 钱福星 |
| 王依凡 |
| 李军 |
| 李磊 |
| 左鹏 |
| 未知 |
| 金海波 |
| 李洁 |
| 芮少军 |
| 徐泳 |
| ? |
| 管亚飞 |

## Schedule

| ID | WBS | Task | Type | Duration | Start | Finish | Predecessors | Complete | Remaining | Actual start | Total slack | Free slack | Constraint | Resources | Work | Actual work |
| --- | --- | --- | --- | --- | --- | --- | --- | --- | --- | --- | --- | --- | --- | --- | --- | --- |
| 1 | 1 | 研发管理工作 | manual | 1d? | 2015-10-08 | 2015-10-09 |  |  |  |  |  |  |  |  |  |  |
| 2 | 2 | 需求工程 | manual | 1d? | 2015-10-08 | 2015-10-09 |  |  |  |  |  |  |  |  |  |  |
| 3 | 3 | 系统设计 | manual | 1d? | 2015-10-08 | 2015-10-09 |  |  |  |  |  |  |  |  |  |  |
| 4 | 4 | **系统开发实现** |  | 59.94d? | 2015-10-08 A | 2015-12-30 |  | 1% | 59.27d? |  | 0d |  |  |  | 2028h | 24h |
| 5 | 4.1 | **设备管理子系统** |  | 32.94d | 2015-10-08 A | 2015-11-23 |  | 4% | 31.68d |  | 0d |  |  |  | 396h | 16h |
| 6 | 4.1.1 | **信息管理** |  | 10d | 2015-10-08 | 2015-10-21 |  | 20% | 8d | 2015-10-12 |  |  |  |  | 80h | 16h |
| 7 | 4.1.1.1 | 接入平台与服务组件管理 |  | 1.5d | 2015-10-14 | 2015-10-15 |  |  |  |  | 14.5d | 3.56d | start no earlier than 2015-10-14 | 钱福星 | 12h |  |
| 8 | 4.1.1.2 | 监控中心与服务器管理 |  | 1.5d | 2015-10-16 | 2015-10-20 |  |  |  |  | 12d | 1.06d | start no earlier than 2015-10-16 | 钱福星 | 12h |  |
| 9 | 4.1.1.3 | 厂商管理 |  | 1d | 2015-10-12 A | 2015-10-13 A |  | 100% |  |  |  |  |  | 钱福星 | 8h | 8h |
| 10 | 4.1.1.4 | 合同管理 |  | 1d | 2015-10-13 A | 2015-10-14 A |  | 100% |  |  |  |  |  | 钱福星 | 8h | 8h |
| 11 | 4.1.1.5 | 诱导屏规格管理 |  | 1d | 2015-10-14 | 2015-10-15 |  |  |  |  | 16.94d | 5d |  | 钱福星 | 8h |  |
| 12 | 4.1.1.6 | 系统功能管理 |  | 2d | 2015-10-15 | 2015-10-19 |  |  |  |  | 14.94d | 3d |  | 钱福星 | 16h |  |
| 13 | 4.1.1.7 | 系统型号管理 |  | 2d | 2015-10-19 | 2015-10-21 |  |  |  |  | 12.94d | 1d |  | 钱福星 | 16h |  |
| 14 | 4.1.2 | **设备信息管理** |  | 22d | 2015-10-08 | 2015-11-06 | 6 |  |  |  | 0d |  |  |  | 112h |  |
| 15 | 4.1.2.1 | 设备检定信息管理 |  | 1d | 2015-10-21 | 2015-10-22 |  |  |  |  | 11.94d | 0d |  | 钱福星 | 8h |  |
| 16 | 4.1.2.2 | 道路点位管理功能调用控件 | manual | 1d? | 2015-10-08 | 2015-10-09 |  |  |  |  |  |  |  | 王依凡 | 8h |  |
| 17 | 4.1.2.3 | 设备增加、修改、删除rest编写与联调测试 |  | 2d | 2015-10-22 | 2015-10-26 | 7, 8, 9, 10, 11, 12, 13, 15, 16 |  |  |  | 11.94d |  |  | 钱福星 | 16h |  |
| 18 | 4.1.2.4 | 设备管理机构树、道路树 |  | 1d | 2015-10-26 | 2015-10-27 | 7, 8 |  |  |  | 10.94d |  |  | 钱福星 | 8h |  |
| 19 | 4.1.2.5 | 设备的查询、启用、停用、报废 |  | 2d | 2015-10-27 | 2015-10-29 |  |  |  |  | 7.94d | 0d |  | 钱福星 | 16h |  |
| 20 | 4.1.2.6 | 设备状态的监控 |  | 1d | 2015-10-29 | 2015-10-30 | 19, 215, 209 |  |  |  | 7.94d |  |  | 陈志英 | 8h |  |
| 21 | 4.1.2.7 | 设备运行查看-过车查询 |  | 0.5d | 2015-10-21 | 2015-10-21 |  |  |  |  | 13.94d | 9d |  | 钱福星 | 4h |  |
| 22 | 4.1.2.8 | 设备运行查看-违法查询 |  | 0.5d | 2015-10-29 | 2015-10-30 |  |  |  |  | 7.44d | 2.5d |  | 钱福星 | 4h |  |
| 23 | 4.1.2.9 | 设备运行查看-流量查询 |  | 0.5d | 2015-10-28 | 2015-10-28 | 67 |  |  |  | 8.94d | 4d |  | 钱福星 | 4h |  |
| 24 | 4.1.2.10 | 设备运行查看-事件查询 |  | 0.5d | 2015-10-30 | 2015-10-30 | 71 |  |  |  | 6.94d | 2d |  | 钱福星 | 4h |  |
| 25 | 4.1.2.11 | 设备运行查看-LED发布 |  | 0.5d | 2015-10-21 | 2015-10-21 | 192 |  |  |  | 13.94d | 9d |  | 钱福星 | 4h |  |
| 26 | 4.1.2.12 | 设备运行查看-可变限速牌发布 |  | 0.5d | 2015-10-21 | 2015-10-21 | 192 |  |  |  | 13.94d | 9d |  | 钱福星 | 4h |  |
| 27 | 4.1.2.13 | 设备运行查看-视频监控 |  | 0.5d | 2015-10-21 | 2015-10-21 | 191 |  |  |  | 13.94d | 9d |  | 钱福星 | 4h |  |
| 28 | 4.1.2.14 | 设备运行查看-气象查询 |  | 0.5d | 2015-11-03 | 2015-11-03 | 75, 76, 80 |  |  |  | 4.94d | 0d |  | 钱福星 | 4h |  |
| 29 | 4.1.2.15 | 区间管理 |  | 2d | 2015-11-04 | 2015-11-06 |  |  |  |  | 2.94d |  |  | 钱福星 | 16h |  |

| ID | WBS | Task | Type | Duration | Start | Finish | Predecessors | Total slack | Constraint | Resources | Work |
| --- | --- | --- | --- | --- | --- | --- | --- | --- | --- | --- | --- |
| 30 | 4.1.3 | **设备地图分布与监控** |  | 20d | 2015-10-08 | 2015-11-04 |  | 4.94d | start no earlier than 2015-10-08 |  | 104h |
| 31 | 4.1.3.1 | 设备在地图上的分布显示 |  | 3d | 2015-10-08 | 2015-10-12 |  | 21.94d |  | 陈志英 | 24h |
| 32 | 4.1.3.2 | 监测点导航、关键字搜索、定位 |  | 1d | 2015-10-12 | 2015-10-13 |  | 20.94d |  | 陈志英 | 8h |
| 33 | 4.1.3.3 | 图层控制、信息查询定位 |  | 3d | 2015-10-13 | 2015-10-16 |  | 17.94d |  | 陈志英 | 24h |
| 34 | 4.1.3.4 | 设备状态监控 |  | 2d | 2015-10-12 | 2015-10-14 | 209, 215 | 20d |  | 陈志英 | 16h |
| 35 | 4.1.3.5 | 设备事件监控 |  | 2d | 2015-10-12 | 2015-10-14 | 217 | 20d |  | 陈志英 | 16h |
| 36 | 4.1.3.6 | 设备事件处理 |  | 1d | 2015-10-22 | 2015-10-23 |  | 12.94d |  | 陈志英 | 8h |
| 37 | 4.1.3.7 | 设备鼠标点击提示功能 |  | 0.5d | 2015-10-23 | 2015-10-23 |  | 12.44d |  | 陈志英 | 4h |
| 38 | 4.1.3.8 | 设备的运行查看功能 |  | 0.5d | 2015-11-03 | 2015-11-04 | 21, 22, 23, 24, 25, 26, 27, 28 | 4.94d |  | 陈志英 | 4h |
| 39 | 4.1.4 | **设备维护** |  | 22d | 2015-10-12 | 2015-11-11 |  | 0d | start no earlier than 2015-10-08 |  | 36h |
| 40 | 4.1.4.1 | 设备故障/事件查询、确认 |  | 2d | 2015-10-12 | 2015-10-14 | 216 | 20d |  | 陈志英 | 16h |
| 41 | 4.1.4.2 | 设备故障/事件维护单生成 |  | 0.5d | 2015-10-12 | 2015-10-12 | 216 | 21.5d |  | 陈志英 | 4h |
| 42 | 4.1.4.3 | 维护单管理 |  | 2d | 2015-11-09 | 2015-11-11 |  | 0d | start no earlier than 2015-11-09 | 钱福星 | 16h |
| 43 | 4.1.5 | **设备建设申报审批** |  | 1d? | 2015-10-08 | 2015-10-09 |  |  |  |  |  |
| 44 | 4.1.5.1 | 建设需求管理 | manual | 1d? | 2015-10-08 | 2015-10-09 |  |  |  |  |  |
| 45 | 4.1.5.2 | 建设审批 | manual | 1d? | 2015-10-08 | 2015-10-09 |  |  |  |  |  |
| 46 | 4.1.5.3 | 验收 | manual | 1d? | 2015-10-08 | 2015-10-09 |  |  |  |  |  |
| 47 | 4.1.6 | **设备首页** |  | 8d | 2015-11-11 | 2015-11-23 | 6, 14, 30, 39 | 0d |  |  | 64h |
| 48 | 4.1.6.1 | 总队、支队用户各个机构下设备四项指标情况统计表 |  | 4d | 2015-11-11 | 2015-11-17 |  | 0d |  | 陈志英 | 32h |
| 49 | 4.1.6.2 | 大队用户设备在线情况、故障情况统计表 |  | 1d | 2015-11-17 | 2015-11-18 |  | 0d |  | 陈志英 | 8h |
| 50 | 4.1.6.3 | 待办事项(待确认事件、待维护设备) |  | 3d | 2015-11-18 | 2015-11-23 |  | 0d |  | 陈志英 | 24h |
| 51 | 4.2 | **路况监控子系统** |  | 19d? | 2015-10-09 | 2015-11-04 |  |  |  |  | 224h |
| 52 | 4.2.1 | **辖区机构管理** |  | 6d | 2015-10-09 | 2015-10-16 |  | 0d |  |  | 48h |
| 53 | 4.2.1.1 | 交警单位 |  | 2d | 2015-10-09 | 2015-10-12 |  | 0d |  | 管亚飞 | 16h |
| 54 | 4.2.1.2 | 执法服务站 |  | 1d | 2015-10-12 | 2015-10-13 |  | 0d |  | 管亚飞 | 8h |
| 55 | 4.2.1.3 | 车管所 |  | 1d | 2015-10-13 | 2015-10-14 |  | 0d |  | 管亚飞 | 8h |
| 56 | 4.2.1.4 | 交警辖区 |  | 1d | 2015-10-14 | 2015-10-15 |  | 0d |  | 管亚飞 | 8h |
| 57 | 4.2.1.5 | 交通岗亭 |  | 1d | 2015-10-15 | 2015-10-16 |  | 0d |  | 管亚飞 | 8h |
| 58 | 4.2.2 | 路况阈值配置 |  | 2d | 2015-10-16 | 2015-10-20 |  | 0d |  | 管亚飞 | 16h |
| 59 | 4.2.3 | 交通管制管理 |  | 3d | 2015-10-20 | 2015-10-23 |  | 0d |  | 管亚飞 | 24h |

| ID | WBS | Task | Duration | Start | Finish | Predecessors | Total slack | Free slack | Constraint | Resources | Work |
| --- | --- | --- | --- | --- | --- | --- | --- | --- | --- | --- | --- |
| 60 | 4.2.4 | **路况综合监控** | 18d? | 2015-10-09 | 2015-11-03 |  | 0d |  |  |  | 120h |
| 61 | 4.2.4.1 | **实时路况** | 12d | 2015-10-09 | 2015-10-26 |  | 0d |  |  |  | 40h |
| 62 | 4.2.4.1.1 | 路段状态双工通信服务 | 4d | 2015-10-09 | 2015-10-14 |  | 0d |  |  | 李磊 | 32h |
| 63 | 4.2.4.1.2 | 路段状态查询服务 | 1d | 2015-10-23 | 2015-10-26 |  | 0d |  |  | 管亚飞 | 8h |
| 64 | 4.2.4.2 | **流量监控** | 15d | 2015-10-09 | 2015-10-29 |  | 0d |  |  |  | 32h |
| 65 | 4.2.4.2.1 | 流量预警事件双工通信服务 | 1d | 2015-10-09 | 2015-10-10 |  | 0d |  |  | 李磊 | 8h |
| 66 | 4.2.4.2.2 | 流量预警事件管理 | 1d | 2015-10-26 | 2015-10-27 |  | 0d |  |  | 管亚飞 | 8h |
| 67 | 4.2.4.2.3 | 断面流量查询 | 1d | 2015-10-27 | 2015-10-28 |  | 8.94d | 0d |  | 管亚飞 | 8h |
| 68 | 4.2.4.2.4 | 区间流量查询 | 1d | 2015-10-28 | 2015-10-29 |  | 0d |  |  | 管亚飞 | 8h |
| 69 | 4.2.4.3 | **交通设备抓拍预警** | 16d | 2015-10-09 | 2015-10-30 |  | 0d |  |  |  | 16h |
| 70 | 4.2.4.3.1 | 交通事件双通服务 | 1d | 2015-10-09 | 2015-10-10 |  | 0d |  |  | 李磊 | 8h |
| 71 | 4.2.4.3.2 | 交通事件管理 | 1d | 2015-10-29 | 2015-10-30 |  | 6.94d | 0d |  | 管亚飞 | 8h |
| 72 | 4.2.4.4 | **气象监控** | 18d? | 2015-10-09 | 2015-11-03 |  | 0d |  |  |  | 32h |
| 73 | 4.2.4.4.1 | 气象预警事件双通服务 | 1d | 2015-10-09 | 2015-10-10 |  | 0d |  |  | 李磊 | 8h |
| 74 | 4.2.4.4.2 | 气象预警事件管理 | 1d? | 2015-10-09 | 2015-10-10 |  | 0d |  |  | 李磊 | 8h |
| 75 | 4.2.4.4.3 | 能见度信息查询 | 1d? | 2015-10-30 | 2015-11-02 |  | 5.94d | 1d |  | 管亚飞 | 8h |
| 76 | 4.2.4.4.4 | 路感信息查询 | 1d? | 2015-11-02 | 2015-11-03 |  | 4.94d | 0d |  | 管亚飞 | 8h |
| 77 | 4.2.5 | **交通事件处理** | 19d? | 2015-10-09 | 2015-11-04 |  | 3.94d |  |  |  | 16h |
| 78 | 4.2.5.1 | 交通事件任务单 | 1d? | 2015-11-03 | 2015-11-04 |  | 0d |  |  | 管亚飞 | 8h |
| 79 | 4.2.5.2 | **路况事件结果分析** | 1d? | 2015-10-09 | 2015-10-10 |  | 21.94d |  |  | 李磊 | 8h |
| 80 | 4.2.5.2.1 | 气象信息查询 | 1d? | 2015-10-09 | 2015-10-10 |  | 21.94d | 17d |  |  |  |
| 81 | 4.3 | **车辆查控子系统** | 49.94d | 2015-10-08 | 2015-12-16 |  | -57d | 0d |  |  | 384h |
| 82 | 4.3.1 | **领域层开发** | 9d | 2015-10-08 | 2015-10-20 |  | -53.06d | 0d |  |  | 88h |
| 83 | 4.3.1.1 | **设计** | 3d | 2015-10-08 | 2015-10-12 |  | -53.06d | 0d |  |  | 40h |
| 84 | 4.3.1.1.1 | 模型设计 | 2d | 2015-10-08 | 2015-10-10 |  | -53.06d | 0d | start no earlier than 2015-10-08 | 左鹏 | 16h |
| 85 | 4.3.1.1.2 | 评审,修改 | 1d | 2015-10-10 | 2015-10-12 | 84 | -53.06d | 0d |  | 左鹏; 芮少军; 徐泳 | 24h |

| ID | WBS | Task | Duration | Start | Finish | Predecessors | Total slack | Free slack | Constraint | Resources | Work |
| --- | --- | --- | --- | --- | --- | --- | --- | --- | --- | --- | --- |
| 86 | 4.3.1.2 | **编码** | 6d | 2015-10-12 | 2015-10-20 | 83 | -53.06d | 0d |  |  | 48h |
| 87 | 4.3.1.2.1 | 过车记录 | 1d | 2015-10-12 | 2015-10-13 |  | -53.06d | 0d |  | 左鹏 | 8h |
| 88 | 4.3.1.2.2 | 布控 | 1d | 2015-10-13 | 2015-10-14 | 87 | -53.06d | 0d |  | 左鹏 | 8h |
| 89 | 4.3.1.2.3 | 报警 | 1d | 2015-10-14 | 2015-10-15 | 88 | -53.06d | 0d |  | 左鹏 | 8h |
| 90 | 4.3.1.2.4 | 车辆 | 1d | 2015-10-15 | 2015-10-16 | 89 | -53.06d | 0d |  | 左鹏 | 8h |
| 91 | 4.3.1.2.5 | 套牌车 | 1d | 2015-10-16 | 2015-10-19 | 90 | -53.06d | 0d |  | 左鹏 | 8h |
| 92 | 4.3.1.2.6 | 配置,二次分析 | 1d | 2015-10-19 | 2015-10-20 | 91 | -53.06d | 0d |  | 左鹏 | 8h |
| 93 | 4.3.2 | **基础设施层开发** | 7d | 2015-10-20 | 2015-10-29 | 82 | -53.06d | 0d |  |  | 56h |
| 94 | 4.3.2.1 | 过车记录 | 1d | 2015-10-20 | 2015-10-21 | 92 | -53.06d | 0d |  | 左鹏 | 8h |
| 95 | 4.3.2.2 | 布控 | 1d | 2015-10-21 | 2015-10-22 | 94 | -53.06d | 0d |  | 左鹏 | 8h |
| 96 | 4.3.2.3 | 报警 | 1d | 2015-10-22 | 2015-10-23 | 95 | -53.06d | 0d |  | 左鹏 | 8h |
| 97 | 4.3.2.4 | 车辆 | 1d | 2015-10-23 | 2015-10-26 | 96 | -53.06d | 0d |  | 左鹏 | 8h |
| 98 | 4.3.2.5 | 套牌车 | 1d | 2015-10-26 | 2015-10-27 | 97 | -53.06d | 0d |  | 左鹏 | 8h |
| 99 | 4.3.2.6 | 二次分析 | 1d | 2015-10-27 | 2015-10-28 | 98 | -53.06d | 0d |  | 左鹏 | 8h |
| 100 | 4.3.2.7 | 配置 | 1d | 2015-10-28 | 2015-10-29 | 99 | -53.06d | 0d |  | 左鹏 | 8h |
| 101 | 4.3.3 | **Rest服务开发** | 30d | 2015-11-04 | 2015-12-16 | 93 | -57d | 0d |  |  | 240h |
| 102 | 4.3.3.1 | **轨迹查询** | 7d | 2015-11-04 | 2015-11-13 |  | -57d | 0d |  |  | 56h |
| 103 | 4.3.3.1.1 | 过车查询 | 3d | 2015-11-04 | 2015-11-09 | 100 | -57d | 0d | start no earlier than 2015-11-04 | 左鹏 | 24h |
| 104 | 4.3.3.1.2 | 轨迹查询 | 2d | 2015-11-09 | 2015-11-11 | 103 | -57d | 0d | start no earlier than 2015-11-09 | 左鹏 | 16h |
| 105 | 4.3.3.1.3 | 跟车查询 | 2d | 2015-11-11 | 2015-11-13 | 104 | -57d | 0d | start no earlier than 2015-11-11 | 左鹏 | 16h |
| 106 | 4.3.3.2 | **布控管理** | 7d | 2015-11-13 | 2015-11-24 |  | -57d | 0d |  |  | 56h |
| 107 | 4.3.3.2.1 | 车辆布控 | 3d | 2015-11-13 | 2015-11-18 | 105 | -57d | 0d |  | 左鹏 | 24h |
| 108 | 4.3.3.2.2 | 假套牌车管理 | 1d | 2015-11-18 | 2015-11-19 | 107 | -57d | 0d | start no earlier than 2015-11-18 | 左鹏 | 8h |
| 109 | 4.3.3.2.3 | 黄标车管理 | 1d | 2015-11-19 | 2015-11-20 | 108 | -57d | 0d | start no earlier than 2015-11-19 | 左鹏 | 8h |
| 110 | 4.3.3.2.4 | 布控报警管理 | 2d | 2015-11-20 | 2015-11-24 | 109 | -57d | 0d | start no earlier than 2015-11-20 | 左鹏 | 16h |

| ID | WBS | Task | Type | Duration | Start | Finish | Predecessors | Total slack | Free slack | Constraint | Resources | Work | Text1 |
| --- | --- | --- | --- | --- | --- | --- | --- | --- | --- | --- | --- | --- | --- |
| 111 | 4.3.3.3 | **重点车辆监管** |  | 3d | 2015-11-24 | 2015-11-27 |  | -57d | 0d |  |  | 24h |  |
| 112 | 4.3.3.3.1 | 重点车辆信息管理 |  | 1d | 2015-11-24 | 2015-11-25 | 110 | -57d | 0d | start no earlier than 2015-11-24 | 左鹏 | 8h |  |
| 113 | 4.3.3.3.2 | 危化品车通行登记 |  | 1d | 2015-11-25 | 2015-11-26 | 112 | -57d | 0d | start no earlier than 2015-11-25 | 左鹏 | 8h |  |
| 114 | 4.3.3.3.3 | 大车检查登记 |  | 1d | 2015-11-26 | 2015-11-27 | 113 | -57d | 0d | start no earlier than 2015-11-26 | 左鹏 | 8h |  |
| 115 | 4.3.3.4 | 套牌车分析 |  | 3d | 2015-11-27 | 2015-12-02 | 114 | -57d | 0d |  | 左鹏 | 24h |  |
| 116 | 4.3.3.5 | **配置管理** |  | 2d | 2015-12-02 | 2015-12-04 |  | -57d | 0d |  |  | 16h |  |
| 117 | 4.3.3.5.1 | 红名单管理 |  | 1d | 2015-12-02 | 2015-12-03 | 115 | -57d | 0d |  | 左鹏 | 8h |  |
| 118 | 4.3.3.5.2 | 卡口报警签收配置 |  | 1d | 2015-12-03 | 2015-12-04 | 117 | -57d | 0d |  | 左鹏 | 8h |  |
| 119 | 4.3.3.6 | **实时监控** |  | 6d | 2015-12-04 | 2015-12-14 |  | -57d | 0d |  |  | 48h |  |
| 120 | 4.3.3.6.1 | 过车监控 |  | 3d | 2015-12-04 | 2015-12-09 | 118 | -57d | 0d |  | 左鹏 | 24h |  |
| 121 | 4.3.3.6.2 | 报警监控 |  | 3d | 2015-12-09 | 2015-12-14 | 120 | -57d | 0d |  | 左鹏 | 24h |  |
| 122 | 4.3.3.7 | 过车监控概况 |  | 2d | 2015-12-14 | 2015-12-16 | 121 | -57d | 0d |  | 左鹏 | 16h |  |
| 123 | 4.4 | **违法管理子系统** |  | 25.5d | 2015-10-08 | 2015-11-11 |  | 0d |  |  |  | 244h |  |
| 124 | 4.4.1 | **接口服务** |  | 1d? | 2015-10-08 | 2015-10-09 |  |  |  |  |  | 40h |  |
| 125 | 4.4.1.1 | 图片存取服务 | manual | 1d | 2015-10-08 | 2015-10-09 |  |  |  |  | 未知 | 8h |  |
| 126 | 4.4.1.2 | 角色权限服务 | manual | 1d? | 2015-10-08 | 2015-10-09 |  |  |  |  | 未知 | 8h |  |
| 127 | 4.4.1.3 | 入库服务 | manual | 1d? | 2015-10-08 | 2015-10-09 |  |  |  |  | 未知 | 8h |  |
| 128 | 4.4.1.4 | 上传服务 | manual | 1d? | 2015-10-08 | 2015-10-09 |  |  |  |  | 未知 | 8h |  |
| 129 | 4.4.1.5 | 登录信息缓存 | manual | 1d? | 2015-10-08 | 2015-10-09 |  |  |  |  |  |  |  |
| 130 | 4.4.1.6 | 领域层和基础层实现 | manual | 1d? | 2015-10-08 | 2015-10-09 |  |  |  |  | 李军 | 8h |  |
| 131 | 4.4.2 | **rest和前端层功能实现** |  | 25.5d | 2015-10-08 | 2015-11-11 |  | 0d |  |  |  | 204h |  |
| 132 | 4.4.2.1 | **采集录入** |  | 18.5d | 2015-10-08 | 2015-11-02 |  | 0d |  |  |  | 148h |  |
| 133 | 4.4.2.1.1 | 超速录入 |  | 2d | 2015-10-08 | 2015-10-10 |  | 0d |  |  | 金海波 | 16h | 金海波 |
| 134 | 4.4.2.1.2 | 闯红灯录入 |  | 1d | 2015-10-10 | 2015-10-12 |  | 0d |  |  | 金海波 | 8h | 金海波 |
| 135 | 4.4.2.1.3 | 大车占道录入 |  | 1d | 2015-10-12 | 2015-10-13 |  | 0d |  |  | 金海波 | 8h | 金海波 |
| 136 | 4.4.2.1.4 | 违停录入 |  | 0.5d | 2015-10-13 | 2015-10-13 |  | 0d |  |  | 金海波 | 4h | 金海波 |
| 137 | 4.4.2.1.5 | 未系安全带录入 |  | 0.5d | 2015-10-13 | 2015-10-14 |  | 0d |  |  | 金海波 | 4h | 金海波 |
| 138 | 4.4.2.1.6 | 超速录入 |  | 0.5d | 2015-10-14 | 2015-10-14 |  | 0d |  |  | 金海波 | 4h |  |
| 139 | 4.4.2.1.7 | 占用应急车道录入 |  | 0.5d | 2015-10-14 | 2015-10-15 |  | 0d |  |  | 金海波 | 4h |  |
| 140 | 4.4.2.1.8 | 其他违法取证 |  | 0.5d | 2015-10-15 | 2015-10-15 |  | 0d |  |  | 金海波 | 4h |  |
| 141 | 4.4.2.1.9 | 数码照片取证 |  | 4d | 2015-10-15 | 2015-10-21 |  | 0d |  |  | 金海波 | 32h |  |
| 142 | 4.4.2.1.10 | 批量导入 |  | 4d | 2015-10-21 | 2015-10-27 |  | 0d |  |  | 金海波 | 32h |  |
| 143 | 4.4.2.1.11 | 数据上传 |  | 1d | 2015-10-27 | 2015-10-28 |  | 0d |  |  | 金海波 | 8h |  |
| 144 | 4.4.2.1.12 | 异常数据管理 |  | 1d | 2015-10-28 | 2015-10-29 |  | 0d |  |  | 金海波 | 8h |  |
| 145 | 4.4.2.1.13 | 特殊车辆数据管理 |  | 1d | 2015-10-29 | 2015-10-30 |  | 0d |  |  | 金海波 | 8h |  |
| 146 | 4.4.2.1.14 | 废弃数据管理 |  | 1d | 2015-10-30 | 2015-11-02 |  | 0d |  |  | 金海波 | 8h |  |

| ID | WBS | Task | Type | Duration | Start | Finish | Predecessors | Complete | Remaining | Total slack | Resources | Work | Actual work |
| --- | --- | --- | --- | --- | --- | --- | --- | --- | --- | --- | --- | --- | --- |
| 147 | 4.4.2.2 | **统计分析** |  | 1d | 2015-10-08 | 2015-10-09 |  |  |  |  |  |  |  |
| 148 | 4.4.2.2.1 | 车辆违章行为构成分析 | manual | 1d? | 2015-10-08 | 2015-10-09 |  |  |  |  |  |  |  |
| 149 | 4.4.2.2.2 | 重点违章行为统计 | manual | 1d? | 2015-10-08 | 2015-10-09 |  |  |  |  |  |  |  |
| 150 | 4.4.2.2.3 | 惯常违章车辆统计 | manual | 1d? | 2015-10-08 | 2015-10-09 |  |  |  |  |  |  |  |
| 151 | 4.4.2.2.4 | 违法趋势分析 | manual | 1d? | 2015-10-08 | 2015-10-09 |  |  |  |  |  |  |  |
| 152 | 4.4.2.2.5 | 采集统计 | manual | 1d? | 2015-10-08 | 2015-10-09 |  |  |  |  |  |  |  |
| 153 | 4.4.2.2.6 | 违章处理统计 | manual | 1d? | 2015-10-08 | 2015-10-09 |  |  |  |  |  |  |  |
| 154 | 4.4.2.3 | **配置管理** |  | 7d | 2015-11-02 | 2015-11-11 |  |  |  | 0d |  | 56h |  |
| 155 | 4.4.2.3.1 | 违法代码配置 |  | 1d | 2015-11-02 | 2015-11-03 |  |  |  | 0d | 金海波 | 8h |  |
| 156 | 4.4.2.3.2 | 违法系统代码配置 |  | 1d | 2015-11-03 | 2015-11-04 |  |  |  | 0d | 金海波 | 8h |  |
| 157 | 4.4.2.3.3 | 违法业务配置 |  | 1d | 2015-11-04 | 2015-11-05 |  |  |  | 0d | 金海波 | 8h |  |
| 158 | 4.4.2.3.4 | 模板配置 |  | 1d | 2015-11-05 | 2015-11-06 |  |  |  | 0d | 金海波 | 8h |  |
| 159 | 4.4.2.3.5 | 设备分组管理 |  | 2d | 2015-11-06 | 2015-11-10 |  |  |  | 0d | 金海波 | 16h |  |
| 160 | 4.4.2.3.6 | 白名单管理 |  | 1d | 2015-11-10 | 2015-11-11 |  |  |  | 0d | 金海波 | 8h |  |
| 161 | 4.5 | **统计分析子系统** |  | 29.5d | 2015-10-08 A | 2015-11-17 |  | 3% | 28.5d | 0d |  | 236h | 8h |
| 162 | 4.5.1 | **过车分析** |  | 11d | 2015-10-08 A | 2015-10-22 |  | 9% | 10d | 0d |  | 88h | 8h |
| 163 | 4.5.1.1 | 过车流量统计模板再评审、 需求范围确认 |  | 1d | 2015-10-08 A | 2015-10-09 A |  | 100% |  |  | 李洁 | 8h | 8h |
| 164 | 4.5.1.2 | 过车流量统计中间表结构设计 |  | 1d | 2015-10-09 | 2015-10-10 | 163 |  |  | 0d | 李洁 | 8h |  |
| 165 | 4.5.1.3 | 单点流量日周月统计模板制作 |  | 1.5d | 2015-10-10 | 2015-10-12 | 163 |  |  | 0d | 李洁 | 12h |  |
| 166 | 4.5.1.4 | 辖区流量日周月统计模板制作 |  | 1.5d | 2015-10-12 | 2015-10-14 | 163 |  |  | 0d | 李洁 | 12h |  |
| 167 | 4.5.1.5 | 道路流量日周月统计模板制作 |  | 1.5d | 2015-10-14 | 2015-10-15 | 163 |  |  | 0d | 李洁 | 12h |  |
| 168 | 4.5.1.6 | 多监测点流量日周月统计模板制作 |  | 1.5d | 2015-10-15 | 2015-10-19 | 163 |  |  | 0d | 李洁 | 12h |  |
| 169 | 4.5.1.7 | 过车数据ETL过程 |  | 3d | 2015-10-19 | 2015-10-22 | 163 |  |  | 0d | 李洁 | 24h |  |
| 170 | 4.5.2 | **违法统计** |  | 8d | 2015-10-22 | 2015-11-03 |  |  |  | 0d |  | 64h |  |
| 171 | 4.5.2.1 | 违法统计模板设计 |  | 1d | 2015-10-22 | 2015-10-23 |  |  |  | 0d | 李洁 | 8h |  |
| 172 | 4.5.2.2 | 违法统计模板评审、需求范围确认 |  | 1d | 2015-10-23 | 2015-10-26 | 171 |  |  | 0d | 李洁 | 8h |  |
| 173 | 4.5.2.3 | 违法统计中间表结构设计 |  | 1d | 2015-10-26 | 2015-10-27 | 172 |  |  | 0d | 李洁 | 8h |  |
| 174 | 4.5.2.4 | 违法采集整理日周月统计模板制作 |  | 1.5d | 2015-10-27 | 2015-10-28 | 172 |  |  | 0d | 李洁 | 12h |  |
| 175 | 4.5.2.5 | 违法数据分析日周月统计模板制作 |  | 1.5d | 2015-10-28 | 2015-10-30 | 172 |  |  | 0d | 李洁 | 12h |  |
| 176 | 4.5.2.6 | 违法数据ETL过程 |  | 2d | 2015-10-30 | 2015-11-03 | 172 |  |  | 0d | 李洁 | 16h |  |

| ID | WBS | Task | Type | Duration | Start | Finish | Predecessors | Total slack | Constraint | Resources | Work |
| --- | --- | --- | --- | --- | --- | --- | --- | --- | --- | --- | --- |
| 177 | 4.5.3 | **设备运维** |  | 7d | 2015-11-03 | 2015-11-12 |  | 0d |  |  | 56h |
| 178 | 4.5.3.1 | 设备运维统计模板设计 |  | 1d | 2015-11-03 | 2015-11-04 |  | 0d |  | 李洁 | 8h |
| 179 | 4.5.3.2 | 设备运维评审、确认 |  | 1d | 2015-11-04 | 2015-11-05 | 178 | 0d |  | 李洁 | 8h |
| 180 | 4.5.3.3 | 设备运维中间表结构设计 |  | 1d | 2015-11-05 | 2015-11-06 | 179 | 0d |  | 李洁 | 8h |
| 181 | 4.5.3.4 | 设备运维周月年统计模板制作 |  | 2d | 2015-11-06 | 2015-11-10 | 179 | 0d |  | 李洁 | 16h |
| 182 | 4.5.3.5 | 设备运维数据ETL过程 |  | 2d | 2015-11-10 | 2015-11-12 | 179 | 0d |  | 李洁 | 16h |
| 183 | 4.5.4 | **web界面开发** |  | 3.5d | 2015-11-12 | 2015-11-17 |  | 0d |  |  | 28h |
| 184 | 4.5.4.1 | 单监测点流量查询界面 |  | 0.5d | 2015-11-12 | 2015-11-12 |  | 0d |  | 李洁 | 4h |
| 185 | 4.5.4.2 | 辖区流量查询界面 |  | 0.5d | 2015-11-12 | 2015-11-13 |  | 0d |  | 李洁 | 4h |
| 186 | 4.5.4.3 | 道路流量查询界面 |  | 0.5d | 2015-11-13 | 2015-11-13 |  | 0d |  | 李洁 | 4h |
| 187 | 4.5.4.4 | 多监测点流量查询界面 |  | 0.5d | 2015-11-13 | 2015-11-16 |  | 0d |  | 李洁 | 4h |
| 188 | 4.5.4.5 | 违法采集整理查询界面 |  | 0.5d | 2015-11-16 | 2015-11-16 |  | 0d |  | 李洁 | 4h |
| 189 | 4.5.4.6 | 违法数据分析查询界面 |  | 0.5d | 2015-11-16 | 2015-11-17 |  | 0d |  | 李洁 | 4h |
| 190 | 4.5.4.7 | 设备运维查询界面 |  | 0.5d | 2015-11-17 | 2015-11-17 |  | 0d |  | 李洁 | 4h |
| 191 | 4.6 | 视频监控子系统 | manual | 1d | 2015-10-08 | 2015-10-09 |  |  |  |  |  |
| 192 | 4.7 | 交通信息发布子系统 | manual | 1d | 2015-10-08 | 2015-10-09 |  |  |  |  |  |
| 193 | 4.8 | **系统管理功能** |  | 29d | 2015-10-12 | 2015-11-20 |  | 0d |  |  | 264h |
| 194 | 4.8.1 | **路网信息** |  | 29d | 2015-10-12 | 2015-11-20 |  | 0d |  |  | 80h |
| 195 | 4.8.1.1 | 道路信息 |  | 2d | 2015-10-12 | 2015-10-14 |  | 0d | start no earlier than 2015-10-12 | 左鹏 | 16h |
| 196 | 4.8.1.2 | 点位信息 |  | 2d | 2015-10-14 | 2015-10-16 | 195 | 0d |  | 左鹏 | 16h |
| 197 | 4.8.1.3 | 路口路段信息 | manual | 3d | 2015-11-12 | 2015-11-17 | 207 |  |  | 王依凡 | 24h |
| 198 | 4.8.1.4 | 道路区间信息 |  | 3d | 2015-11-17 | 2015-11-20 | 197 | 0d |  | 王依凡 | 24h |
| 199 | 4.8.2 | 机构信息 |  | 2d | 2015-10-12 | 2015-10-14 |  | 0d | start no earlier than 2015-10-12 | 王依凡 | 16h |
| 200 | 4.8.3 | 用户信息 |  | 3d | 2015-10-14 | 2015-10-19 | 199 | 0d |  | 王依凡 | 24h |

| ID | WBS | Task | Type | Duration | Start | Finish | Predecessors | Total slack | Free slack | Constraint | Resources | Work |
| --- | --- | --- | --- | --- | --- | --- | --- | --- | --- | --- | --- | --- |
| 201 | 4.8.4 | **角色权限** |  | 6d | 2015-10-19 | 2015-10-27 |  | 0d |  |  |  | 48h |
| 202 | 4.8.4.1 | 角色管理 |  | 3d | 2015-10-19 | 2015-10-22 | 200 | 0d |  |  | 王依凡 | 24h |
| 203 | 4.8.4.2 | 权限分配 |  | 3d | 2015-10-22 | 2015-10-27 | 202 | 0d |  |  | 王依凡 | 24h |
| 204 | 4.8.5 | 系统代码 |  | 3d | 2015-10-27 | 2015-10-30 | 203 | 0d |  |  | 王依凡 | 24h |
| 205 | 4.8.6 | 操作日志 |  | 3d | 2015-10-30 | 2015-11-04 | 204 | 0d |  |  | 王依凡 | 24h |
| 206 | 4.8.7 | 系统公告 |  | 3d | 2015-11-04 | 2015-11-09 | 205 | 0d |  |  | 王依凡 | 24h |
| 207 | 4.8.8 | 系统管理概况 |  | 3d | 2015-11-09 | 2015-11-12 | 206 | 0d |  |  | 王依凡 | 24h |
| 208 | 4.9 | 系统管理功能 | manual | 1d | 2015-10-08 | 2015-10-09 |  |  |  |  |  |  |
| 209 | 4.10 | 客户端双工框架 |  | 1d? | 2015-10-08 | 2015-10-09 |  | 21.94d | 1.94d |  | 左鹏 | 8h |
| 210 | 4.11 | **后台分析服务** |  | 15d? | 2015-10-10 | 2015-10-30 |  |  |  |  |  | 272h |
| 211 | 4.11.1 | **后台服务分析** |  | 1d? | 2015-10-10 | 2015-10-12 |  | 0d |  |  |  | 16h |
| 212 | 4.11.1.1 | 后台分析服务数量及开发方式分析 |  | 1d? | 2015-10-10 | 2015-10-12 |  | 0d |  |  | 李军 | 8h |
| 213 | 4.11.1.2 | 分析并确定后台分析服务承载方式 |  | 1d? | 2015-10-10 | 2015-10-12 |  | 0d |  |  | 李磊 | 8h |
| 214 | 4.11.2 | **设备分析服务** |  | 1d? | 2015-10-10 | 2015-10-12 |  | 20d |  |  |  |  |
| 215 | 4.11.2.1 | 设备实时状态分析服务 |  | 1d? | 2015-10-10 | 2015-10-12 |  | 20d | 0d |  |  |  |
| 216 | 4.11.2.2 | 设备故障分析服务 |  | 1d? | 2015-10-10 | 2015-10-12 |  | 20d | 0d |  |  |  |
| 217 | 4.11.2.3 | 设备事件分析服务 |  | 1d? | 2015-10-10 | 2015-10-12 |  | 20d | 0d |  |  |  |
| 218 | 4.11.3 | **路况分析服务** |  | 3d | 2015-10-09 | 2015-10-13 |  |  |  |  |  | 152h |
| 219 | 4.11.3.1 | 断面1小时统计服务 | inactive | 1d | 2015-10-09 | 2015-10-10 |  | 0d |  |  | 李磊 | 8h |
| 220 | 4.11.3.2 | 路段状态分析服务 |  | 3d | 2015-10-09 | 2015-10-13 |  | 0d |  |  | 李磊 | 24h |
| 221 | 4.11.3.3 | 流量突变分析服务 |  | 2d | 2015-10-15 | 2015-10-16 |  | -3.88d | 0d | finish no earlier than 2015-10-16 | 李磊 | 16h |
| 222 | 4.11.3.4 | 区间旅行时间超长分析服务 |  | 2d | 2015-10-09 | 2015-10-12 |  | 0d |  |  | 李磊 | 16h |
| 223 | 4.11.3.5 | 断面车速差分析服务 | inactive, manual | 2d | 2015-11-15 | 2015-11-17 |  |  |  |  | 李磊 | 16h |
| 224 | 4.11.3.6 | 白天大型车辆占比超标分析服务 |  | 2d | 2015-10-09 | 2015-10-12 |  | 0d |  |  | 李磊 | 16h |
| 225 | 4.11.3.7 | 区间饱和分析服务 |  | 2d | 2015-10-09 | 2015-10-12 |  | 0d |  |  | 李磊 | 16h |
| 226 | 4.11.3.8 | 能见度分析服务 |  | 2d | 2015-10-09 | 2015-10-12 |  | 0d |  |  | 李磊 | 16h |
| 227 | 4.11.3.9 | 路面温度过高分析 |  | 2d | 2015-10-09 | 2015-10-12 |  | 0d |  |  | 李磊 | 16h |
| 228 | 4.11.3.10 | 路面积水、结冰分析 |  | 2d | 2015-10-09 | 2015-10-12 |  | 0d |  |  | 李磊 | 16h |
| 229 | 4.11.3.11 | 大风预警分析 |  | 2d | 2015-10-09 | 2015-10-12 |  | 0d |  |  | 李磊 | 16h |

| ID | WBS | Task | Type | Duration | Start | Finish | Predecessors | Total slack | Free slack | Resources | Work |
| --- | --- | --- | --- | --- | --- | --- | --- | --- | --- | --- | --- |
| 230 | 4.11.4 | **车辆查控服务开发** |  | 1d? | 2015-10-10 | 2015-10-12 |  |  |  |  | 80h |
| 231 | 4.11.4.1 | 入库服务 |  | 2d | 2015-12-16 | 2015-12-18 | 122 | -57d | 0d | 左鹏 | 16h |
| 232 | 4.11.4.2 | 布控比对服务 |  | 2d | 2015-12-18 | 2015-12-22 | 231 | -57d | 0d | 左鹏 | 16h |
| 233 | 4.11.4.3 | 套牌车嫌疑分析服务 |  | 2d | 2015-12-22 | 2015-12-24 | 232 | -57d | 0d | 左鹏 | 16h |
| 234 | 4.11.4.4 | 危化品车分析服务 |  | 2d | 2015-12-24 | 2015-12-28 | 233 | -57d | 0d | 左鹏 | 16h |
| 235 | 4.11.4.5 | 超高速/高速超低速服务 |  | 1d | 2015-12-28 | 2015-12-29 | 234 | -57d | 0d | 左鹏 | 8h |
| 236 | 4.11.4.6 | 黄标车预警 |  | 1d | 2015-12-29 | 2015-12-30 | 235 | -57d | 0d | 左鹏 | 8h |
| 237 | 4.11.5 | RabbitMQ入库服务 | milestone | 0d | 2015-10-10 | 2015-10-10 |  | 0d |  | 李军 |  |
| 238 | 4.11.6 | RabbitMQ订阅服务 |  | 3d | 2015-10-10 | 2015-10-14 | 237 | 0d |  | 李军 | 24h |
| 239 | 5 | **系统测试** |  | 10d | 2015-10-26 | 2015-11-09 |  | 0d |  |  |  |
| 240 | 5.1 | 违法管理子系统测试 | manual | 10d | 2015-10-26 | 2015-11-09 |  |  |  |  |  |
| 241 | 6 | 系统发布准备 | manual | 1d | 2015-10-08 | 2015-10-09 |  |  |  |  |  |
| 242 | 7 | 昆吾项目配合工作 | manual | 1d | 2015-10-08 | 2015-10-09 |  |  |  |  |  |
| 243 | 8 | 结项工作 | manual | 1d | 2015-10-08 | 2015-10-09 |  |  |  |  |  |
