Schedule from MS Project, 2015-09-28 to 2015-12-21.
Microsoft

## Calendars

- 标准: Mon-Fri 08:00-12:00, 13:00-17:00; Sat-Sun off.

## Resources

| Resource |
| --- |
| 汪俊 |
| 杨杰 |
| 左鹏 |
| 李军 |
| 李磊 |
| 徐泳 |
| 陈志英 |
| 金海波 |
| 李洁 |
| 金鑫 |

## Schedule

| ID | WBS | Task | Type | Duration | Start | Finish | Total slack | Resources | Work |
| --- | --- | --- | --- | --- | --- | --- | --- | --- | --- |
| 1 | 1 | **管控平台3.0** |  | 60d? | 2015-09-28 | 2015-12-21 | 0d |  | 960h |
| 2 | 1.1 | 立项阶段 | manual | 1d? | 2015-09-28 | 2015-09-29 |  |  |  |
| 3 | 1.2 | **v0.6最小功能级** |  | 4.88d? | 2015-10-26 | 2015-10-31 | 0d |  | 320h |
| 4 | 1.2.1 | 构思阶段 | manual | 1d? | 2015-10-26 | 2015-10-27 |  |  |  |
| 5 | 1.2.2 | 需求基线 | manual | 5d | 2015-10-26 | 2015-10-30 |  | 汪俊; 杨杰 | 80h |
| 6 | 1.2.3 | 概要设计 | manual | 6d | 2015-10-26 | 2015-10-31 |  | 徐泳; 李磊; 李军; 左鹏; 陈志英 | 240h |
| 7 | 1.3 | **开发阶段** |  | 60d? | 2015-09-28 | 2015-12-21 | 0d |  | 640h |
| 8 | 1.3.1 | **框架开发** |  | 16.88d? | 2015-10-22 | 2015-11-13 | 0d |  | 176h |
| 9 | 1.3.1.1 | 双工通信 | manual | 1d? | 2015-10-22 | 2015-10-23 |  | 李磊 | 8h |
| 10 | 1.3.1.2 | 前端公共 | manual | 4d | 2015-10-22 | 2015-10-27 |  | 左鹏 | 32h |
| 11 | 1.3.1.3 | 后台公共服务 | manual | 17d | 2015-10-22 | 2015-11-13 |  | 李军 | 136h |
| 12 | 1.3.2 | **功能开发** |  | 54d? | 2015-09-28 | 2015-12-11 | 0d |  | 440h |
| 13 | 1.3.2.1 | **违法处理子系统** |  | 36d? | 2015-09-28 | 2015-11-17 | 0d |  | 360h |
| 14 | 1.3.2.1.1 | 录入、取证核心功能实现 | manual | 26d | 2015-09-28 | 2015-10-31 |  | 金海波 | 208h |
| 15 | 1.3.2.1.2 | 违法统计 | manual | 6d | 2015-10-26 | 2015-10-31 |  | 李洁 | 48h |
| 16 | 1.3.2.1.3 | 违法处理子系统基本测试 | manual | 1d? | 2015-10-31 | 2015-11-02 |  | 金鑫 | 8h |
| 17 | 1.3.2.1.4 | 完整功能实现 | manual | 11d | 2015-11-02 | 2015-11-14 |  | 金海波 | 88h |
| 18 | 1.3.2.1.5 | 违法处理子系统测试 | manual | 1d? | 2015-11-16 | 2015-11-17 |  | 金鑫 | 8h |
| 19 | 1.3.2.2 | **设备管理子系统** |  | 1.12d? | 2015-11-14 | 2015-11-17 | 0d |  | 16h |
| 20 | 1.3.2.2.1 | 功能实现 | manual | 1d? | 2015-11-14 | 2015-11-14 |  | 陈志英 | 8h |
| 21 | 1.3.2.2.2 | 系统测试 | manual | 1d? | 2015-11-16 | 2015-11-17 |  | 金鑫 | 8h |
| 22 | 1.3.2.3 | **系统管理** |  | 2d? | 2015-11-05 | 2015-11-09 | 0d |  | 16h |
| 23 | 1.3.2.3.1 | 功能实现 | manual | 1d? | 2015-11-05 | 2015-11-05 |  | 左鹏 | 8h |
| 24 | 1.3.2.3.2 | 系统测试 | manual | 1d? | 2015-11-06 | 2015-11-09 |  | 金鑫 | 8h |

| ID | WBS | Task | Type | Duration | Start | Finish | Total slack | Resources | Work |
| --- | --- | --- | --- | --- | --- | --- | --- | --- | --- |
| 25 | 1.3.2.4 | **车辆查控子系统** |  | 11d? | 2015-11-26 | 2015-12-11 | 0d |  | 32h |
| 26 | 1.3.2.4.1 | 基本功能实现 | manual | 1d? | 2015-11-26 | 2015-11-26 |  | 左鹏 | 8h |
| 27 | 1.3.2.4.2 | 系统测试 | manual | 1d? | 2015-11-27 | 2015-11-30 |  | 金鑫 | 8h |
| 28 | 1.3.2.4.3 | 二次功能分析等完整功能实现 | manual | 1d? | 2015-12-09 | 2015-12-09 |  | 左鹏 | 8h |
| 29 | 1.3.2.4.4 | 系统测试 | manual | 1d? | 2015-12-10 | 2015-12-11 |  | 金鑫 | 8h |
| 30 | 1.3.2.5 | 路况监控子系统 | manual | 1d? | 2015-09-28 | 2015-09-29 |  |  |  |
| 31 | 1.3.2.6 | 功能实现 | manual | 1d? | 2015-11-27 | 2015-11-27 |  | 李磊 | 8h |
| 32 | 1.3.2.7 | 系统测试 | manual | 1d? | 2015-11-30 | 2015-12-01 |  | 金鑫 | 8h |
| 33 | 1.3.3 | **统计分析子系统** |  | 2d? | 2015-11-17 | 2015-11-19 | 0d |  | 16h |
| 34 | 1.3.3.1 | 功能实现 | manual | 1d? | 2015-11-17 | 2015-11-17 |  | 李洁 | 8h |
| 35 | 1.3.3.2 | 系统测试 | manual | 1d? | 2015-11-18 | 2015-11-19 |  | 金鑫 | 8h |
| 36 | 1.3.4 | 系统联调 | manual | 6d | 2015-12-10 | 2015-12-17 |  |  |  |
| 37 | 1.3.5 | 集成测试 | manual | 1d? | 2015-12-18 | 2015-12-21 |  | 金鑫 | 8h |
| 38 | 1.3.6 | 系统现场试运行 | manual | 1d? | 2015-09-28 | 2015-09-29 |  |  |  |
