Schedule from MS Project, 2015-08-27 to 2016-01-01, A marks actual dates.
Microsoft

## Calendars

- 标准: Mon-Fri 08:00-12:00, 13:00-17:00; Sat-Sun off.

## Resources

| Resource |
| --- |
| 汪俊 |
| 杨杰 |
| 李磊 |
| 2015年11月12日 |
| 2015年11月27日 |
| 2015年11月30日 |
| 2015年10月9日 |
| 李军 |
| 左鹏 |
| 陈志英 |
| 钱福星 |
| 8 |
| 未知 |
| 金海波 |
| 李洁 |
| 195 |
| 207 |
| 197 |
| 199 |
| 200 |
| 202 |
| 203 |
| 204 |
| 205 |
| 206 |
| 王依凡 |
| 王 |
| 管亚飞 |
| 金鑫 |
| 163 |
| 171 |
| 172 |
| 178 |
| 179 |

## Schedule

| ID | WBS | Task | Type | Duration | Start | Finish | Complete | Remaining | Total slack | Free slack | Constraint | Resources | Work | Actual work |
| --- | --- | --- | --- | --- | --- | --- | --- | --- | --- | --- | --- | --- | --- | --- |
| 1 | 1 | **管控平台3.0** |  | 80d | 2015-08-27 A | 2015-12-16 | 4% | 76.72d |  |  |  |  | 2564.47h | 105.58h |
| 2 | 1.1 | 立项阶段 | manual | 1d | 2015-08-27 | 2015-08-28 |  |  |  |  |  |  |  |  |
| 3 | 1.2 | **v0.6最小功能级** |  | 91d? | 2015-08-27 A | 2016-01-01 | 4% | 87.24d? | 0d |  |  |  | 2564.47h | 105.58h |
| 4 | 1.2.1 | **构思阶段** |  | 14d | 2015-10-08 | 2015-10-28 |  |  | 0d |  |  |  | 96h |  |
| 5 | 1.2.1.1 | **原型设计** |  | 14d | 2015-10-08 | 2015-10-28 |  |  | 0d |  |  |  | 96h |  |
| 6 | 1.2.1.1.1 | 整体结构整理 | manual | 5d | 2015-10-08 | 2015-10-14 |  |  |  |  |  | 汪俊 | 40h |  |
| 7 | 1.2.1.1.2 | 功能设计 | manual | 7d | 2015-10-15 | 2015-10-26 |  |  |  |  |  | 杨杰 | 56h |  |
| 8 | 1.2.1.1.3 | 原型评审 | manual | 1d | 2015-10-27 | 2015-10-28 |  |  |  |  |  |  |  |  |
| 9 | 1.2.2 | **开发阶段** |  | 91d? | 2015-08-27 A | 2016-01-01 | 4% | 87.08d? | 0d |  |  |  | 2468.47h | 105.58h |
| 10 | 1.2.2.1 | **框架开发** |  | 72d? | 2015-08-27 | 2015-12-07 |  |  | 19d |  |  |  | 276h |  |
| 11 | 1.2.2.1.1 | **服务端双工通信** |  | 5.06d | 2015-10-22 | 2015-10-28 |  |  |  |  |  |  | 28h |  |
| 12 | 1.2.2.1.1.1 | 过车监控 | milestone | 0d | 2015-10-22 | 2015-10-22 |  |  | 51.06d |  | start no earlier than 2015-10-22 | 李磊 |  |  |
| 13 | 1.2.2.1.1.2 | 布控比对报警 |  | 1d | 2015-10-22 | 2015-10-23 |  |  | 48.06d | 8.06d | start no earlier than 2015-10-22 | 李磊 | 8h |  |
| 14 | 1.2.2.1.1.3 | 路段状态 |  | 1d | 2015-10-26 | 2015-10-27 |  |  | 46.06d | 8.06d | start no earlier than 2015-10-26 | 李磊 | 8h |  |
| 15 | 1.2.2.1.1.4 | 流量事件 |  | 0.5d | 2015-10-27 | 2015-10-27 |  |  | 46.56d | 9.56d | start no earlier than 2015-10-27 | 李磊 | 4h |  |
| 16 | 1.2.2.1.1.5 | 气象事件 |  | 0.5d | 2015-10-27 | 2015-10-27 |  |  | 45.56d | 10.56d | start no earlier than 2015-10-27 | 李磊 | 4h |  |
| 17 | 1.2.2.1.1.6 | 交通事件 |  | 0.5d | 2015-10-28 | 2015-10-28 |  |  | 46.56d |  | start no earlier than 2015-10-28 | 李磊 | 4h |  |
| 18 | 1.2.2.1.2 | 图片处理中心 |  | 2d | 2015-08-27 | 2015-08-31 |  |  | 88d | 57d |  | 李军 | 16h |  |
| 19 | 1.2.2.1.3 | 数据离线下载中心 |  | 4d | 2015-08-27 | 2015-09-02 |  |  | 86d | 56d |  | 李磊 | 32h |  |
| 20 | 1.2.2.1.4 | 服务代理中心 |  | 1d | 2015-08-27 | 2015-08-28 |  |  | 90d |  |  | 李磊 | 8h |  |
| 21 | 1.2.2.1.5 | 客户端双工框架 |  | 1d | 2015-10-08 | 2015-10-08 |  |  | 60.12d |  | finish no earlier than 2015-10-08 | 左鹏 | 8h |  |
| 22 | 1.2.2.1.6 | **前端公共** |  | 32.12d | 2015-10-22 | 2015-12-07 |  |  | 0d |  |  |  | 56h |  |
| 23 | 1.2.2.1.6.1 | gis图层控制控件封装 | manual | 4d | 2015-10-22 | 2015-10-27 |  |  |  |  |  | 陈志英 | 32h |  |
| 24 | 1.2.2.1.6.2 | 预警栏 | manual | 1d | 2015-10-22 | 2015-10-23 |  |  |  |  |  | 左鹏 | 8h |  |
| 25 | 1.2.2.1.6.3 | 循环控件 | manual | 1d | 2015-10-23 | 2015-10-26 |  |  |  |  |  | 左鹏 | 8h |  |
| 26 | 1.2.2.1.6.4 | 权限控制 | manual | 1d | 2015-12-04 | 2015-12-07 |  |  |  |  |  | 左鹏 | 8h |  |

| ID | WBS | Task | Type | Duration | Start | Finish | Predecessors | Complete | Remaining | Total slack | Resources | Work | Actual work |
| --- | --- | --- | --- | --- | --- | --- | --- | --- | --- | --- | --- | --- | --- |
| 27 | 1.2.2.1.7 | **后台公共服务** |  | 16d? | 2015-10-22 | 2015-11-13 |  |  |  | 0d | 李军 | 128h |  |
| 28 | 1.2.2.1.7.1 | 服务配置项配置和访问组件 | manual | 2d | 2015-10-22 | 2015-10-26 |  |  |  |  |  |  |  |
| 29 | 1.2.2.1.7.2 | 服务通用日志库 | manual | 2d | 2015-10-26 | 2015-10-28 |  |  |  |  |  |  |  |
| 30 | 1.2.2.1.7.3 | 服务通用数据库访问库 | manual | 2d | 2015-10-28 | 2015-10-30 |  |  |  |  |  |  |  |
| 31 | 1.2.2.1.7.4 | 服务通用RabbitMQ交互库 | manual | 1d? | 2015-10-22 | 2015-10-23 |  |  |  |  |  |  |  |
| 32 | 1.2.2.1.7.5 | 服务通用加载组件 | manual | 1d? | 2015-10-22 | 2015-10-23 |  |  |  |  |  |  |  |
| 33 | 1.2.2.1.7.6 | 数据规范化服务基础框架和各类数据规范化 | manual | 5d | 2015-10-31 | 2015-11-06 |  |  |  |  |  |  |  |
| 34 | 1.2.2.1.7.7 | 数据入库服务基础框架和各类数据入库 | manual | 5d | 2015-11-06 | 2015-11-13 |  |  |  |  |  |  |  |
| 35 | 1.2.2.2 | **功能开发** |  | 91d? | 2015-08-27 A | 2016-01-01 |  | 5% | 86.54d? | 0d |  | 2192.47h | 105.58h |
| 36 | 1.2.2.2.1 | **设备管理子系统** |  | 24d? | 2015-10-22 A | 2015-11-24 |  | 13% | 20.89d? | 0d |  | 656h | 82.88h |
| 37 | 1.2.2.2.1.1 | 设备状态分析服务 | manual | 1d? | 2015-11-03 | 2015-11-03 |  |  |  |  | 李军 | 8h |  |
| 38 | 1.2.2.2.1.2 | 设备故障分析服务 | manual | 1d? | 2015-11-03 | 2015-11-03 |  |  |  |  | 李军 | 8h |  |
| 39 | 1.2.2.2.1.3 | 设备事件分析服务 | manual | 1d? | 2015-11-03 | 2015-11-03 |  |  |  |  | 李军 | 8h |  |
| 40 | 1.2.2.2.1.4 | 设备远控、参数设置指令MQ封装 | manual | 1d? | 2015-11-05 | 2015-11-05 |  |  |  |  | 李军 | 8h |  |
| 41 | 1.2.2.2.1.5 | **设备信息管理与监控** |  | 24d | 2015-10-22 A | 2015-11-24 |  | 14% | 20.64d | 0d | 钱福星 | 624h | 82.88h |
| 42 | 1.2.2.2.1.5.1 | 厂商管理 | manual | 1d | 2015-10-22 A | 2015-10-22 A |  | 100% |  |  | 钱福星 | 8h | 8h |
| 43 | 1.2.2.2.1.5.2 | 合同管理 | manual | 1d | 2015-10-22 A | 2015-10-22 A |  | 100% |  |  | 钱福星 | 8h | 8h |
| 44 | 1.2.2.2.1.5.3 | 系统功能管理 | manual | 1d | 2015-10-22 A | 2015-10-22 A |  | 100% |  |  | 钱福星 | 8h | 8h |
| 45 | 1.2.2.2.1.5.4 | 系统型号管理 | manual | 1d | 2015-10-22 A | 2015-10-22 A |  | 100% |  |  | 钱福星 | 8h | 8h |
| 46 | 1.2.2.2.1.5.5 | 监控中心管理 | manual | 1d | 2015-10-22 A | 2015-10-22 A |  | 100% |  |  | 钱福星 | 8h | 8h |
| 47 | 1.2.2.2.1.5.6 | 服务器管理 | manual | 1d | 2015-10-22 A | 2015-10-22 A |  | 100% |  |  | 钱福星 | 8h | 8h |
| 48 | 1.2.2.2.1.5.7 | 服务器组管理 | manual | 1d | 2015-10-22 A | 2015-10-22 A |  | 100% |  |  | 钱福星 | 8h | 8h |
| 49 | 1.2.2.2.1.5.8 | 设备基础信息管理 | manual | 4d | 2015-10-23 | 2015-10-28 |  |  |  |  | 钱福星 | 32h |  |
| 50 | 1.2.2.2.1.5.9 | 设备部件管理 | manual | 2d | 2015-10-29 | 2015-10-30 |  |  |  |  | 钱福星 | 16h |  |
| 51 | 1.2.2.2.1.5.10 | 设备检定证书管理 | manual | 2d | 2015-11-02 | 2015-11-03 |  |  |  |  | 钱福星 | 16h |  |
| 52 | 1.2.2.2.1.5.11 | 设备图片管理 | manual | 2d | 2015-11-04 | 2015-11-05 |  |  |  |  | 钱福星 | 16h |  |
| 53 | 1.2.2.2.1.5.12 | 参数设置 | manual | 1d | 2015-11-06 | 2015-11-06 | 40 |  |  |  | 钱福星 | 8h |  |
| 54 | 1.2.2.2.1.5.13 | 设备运行情况监控 | manual | 1d | 2015-11-12 | 2015-11-12 | 37, 38, 39 |  |  |  | 陈志英 | 8h |  |
| 55 | 1.2.2.2.1.5.14 | 区间管理 | manual | 2d | 2015-11-09 | 2015-11-10 |  |  |  |  | 钱福星 | 16h |  |

| ID | WBS | Task | Type | Duration | Start | Finish | Predecessors | Complete | Remaining | Total slack | Free slack | Resources | Work | Actual work | Text1 |
| --- | --- | --- | --- | --- | --- | --- | --- | --- | --- | --- | --- | --- | --- | --- | --- |
| 56 | 1.2.2.2.1.5.15 | **GIS集成应用** |  | 20d | 2015-10-28 | 2015-11-24 |  |  |  | 0d |  |  | 264h |  |  |
| 57 | 1.2.2.2.1.5.15.1 | 设备空间查询 | manual | 2d | 2015-10-28 | 2015-10-29 |  |  |  |  |  | 陈志英 | 16h |  |  |
| 58 | 1.2.2.2.1.5.15.2 | 设备属性查询 | manual | 1d | 2015-10-30 | 2015-10-30 |  |  |  |  |  | 陈志英 | 8h |  |  |
| 59 | 1.2.2.2.1.5.15.3 | 地图拾取设备提示功能 | manual | 2d | 2015-11-02 | 2015-11-03 |  |  |  |  |  | 陈志英 | 16h |  |  |
| 60 | 1.2.2.2.1.5.15.4 | 设备运行状态监控 | manual | 4d | 2015-11-04 | 2015-11-09 | 37, 38 |  |  |  |  | 陈志英 | 32h |  |  |
| 61 | 1.2.2.2.1.5.15.5 | 设备事件监控 | manual | 2d | 2015-11-10 | 2015-11-11 | 39 |  |  |  |  | 陈志英 | 16h |  |  |
| 62 | 1.2.2.2.1.5.15.6 | 各种类型设备集成应用 | manual | 4d | 2015-10-28 | 2015-11-02 |  |  |  |  |  | 陈志英; 钱福星 | 64h |  |  |
| 63 | 1.2.2.2.1.5.15.7 | **设备运行维护** |  | 10d | 2015-11-11 | 2015-11-24 |  |  |  | 0d |  |  | 112h |  |  |
| 64 | 1.2.2.2.1.5.15.7.1 | 故障与告警信息管理 | manual | 3d | 2015-11-11 | 2015-11-13 |  |  |  |  |  | 钱福星 | 24h |  |  |
| 65 | 1.2.2.2.1.5.15.7.2 | 维护单管理 | manual | 3d | 2015-11-16 | 2015-11-18 |  |  |  |  |  | 钱福星 | 24h |  |  |
| 66 | 1.2.2.2.1.5.15.7.3 | **设备概括** |  | 8d | 2015-11-13 | 2015-11-24 |  |  |  | 0d |  |  | 64h |  |  |
| 67 | 1.2.2.2.1.5.15.7.3.1 | 总队、支队设备运行概括一览表 | manual | 4d | 2015-11-13 | 2015-11-18 |  |  |  |  |  | 陈志英 | 32h |  |  |
| 68 | 1.2.2.2.1.5.15.7.3.2 | 大队设备运行概括一览表 | manual | 4d | 2015-11-19 | 2015-11-24 |  |  |  |  |  | 陈志英 | 32h |  |  |
| 69 | 1.2.2.2.2 | **违法处理子系统** |  | 76d? | 2015-08-27 A | 2015-12-11 |  | 10% | 68.7d? | 15d |  |  | 488.47h | 22.7h |  |
| 70 | 1.2.2.2.2.1 | **接口服务** |  | 1d? | 2015-08-27 | 2015-08-28 |  |  |  |  |  |  | 80h |  |  |
| 71 | 1.2.2.2.2.1.1 | 图片存取服务 | manual | 2d | 2015-11-12 | 2015-11-16 |  |  |  |  |  | 李军 | 16h |  |  |
| 72 | 1.2.2.2.2.1.2 | 违法信息入库服务 | manual | 2d | 2015-11-17 | 2015-11-19 |  |  |  |  |  | 李军 | 16h |  |  |
| 73 | 1.2.2.2.2.1.3 | 上传服务 | manual | 2d | 2015-11-20 | 2015-11-24 |  |  |  |  |  | 李军 | 16h |  |  |
| 74 | 1.2.2.2.2.1.4 | 登录信息缓存 | manual | 2d | 2015-12-09 | 2015-12-11 |  |  |  |  |  | 左鹏 | 16h |  |  |
| 75 | 1.2.2.2.2.1.5 | 工作量统计轮巡服务 | manual | 2d | 2015-11-25 | 2015-11-27 |  |  |  |  |  | 李军 | 16h |  |  |
| 76 | 1.2.2.2.2.2 | **WEB模块前后端功能实现** |  | 67.88d? | 2015-08-27 A | 2015-11-30 |  | 11% | 60.12d? | 23.12d |  |  | 408.47h | 22.7h |  |
| 77 | 1.2.2.2.2.2.1 | 领域层和基础层实现 |  | 5d | 2015-10-28 | 2015-11-03 | 111 |  |  | 23.12d | 0d | 金海波 | 40h |  |  |
| 78 | 1.2.2.2.2.2.2 | **采集录入** |  | 39d | 2015-09-28 A | 2015-11-19 |  | 22% | 30.49d | 30.12d |  | 金海波 | 304.47h | 22.7h |  |
| 79 | 1.2.2.2.2.2.2.1 | 违法监控记录查询 | manual | 1d | 2015-10-04 A | 2015-10-04 A |  | 100% |  |  |  |  |  |  | 金海波 |
| 80 | 1.2.2.2.2.2.2.2 | 记录初筛 | manual | 1d | 2015-10-04 A | 2015-10-04 A |  | 100% |  |  |  |  |  |  | 金海波 |
| 81 | 1.2.2.2.2.2.2.3 | 超速录入 |  | 9d | 2015-09-28 A | 2015-10-08 |  | 44% | 5d | 55.62d | 0d |  |  |  | 金海波 |
| 82 | 1.2.2.2.2.2.2.4 | 闯红灯录入 |  | 1d | 2015-10-09 | 2015-10-09 | 81 |  |  | 55.62d | 0d |  |  |  | 金海波 |
| 83 | 1.2.2.2.2.2.2.5 | 大车占道录入 |  | 1d | 2015-10-12 | 2015-10-12 | 82 |  |  | 55.62d | 0d |  |  |  | 金海波 |
| 84 | 1.2.2.2.2.2.2.6 | 违停录入 |  | 0.5d | 2015-10-13 | 2015-10-13 | 83 |  |  | 55.62d | 0d |  |  |  | 金海波 |
| 85 | 1.2.2.2.2.2.2.7 | 未系安全带录入 |  | 0.5d | 2015-10-13 | 2015-10-13 | 84 |  |  | 55.62d | 0d |  |  |  | 金海波 |
| 86 | 1.2.2.2.2.2.2.8 | 客车夜间禁行录入 |  | 0.5d | 2015-10-14 | 2015-10-14 | 85 |  |  | 55.62d | 0d |  |  |  |  |
| 87 | 1.2.2.2.2.2.2.9 | 占用应急车道录入 |  | 0.5d | 2015-10-14 | 2015-10-14 | 86 |  |  | 55.62d | 0d |  |  |  |  |
| 88 | 1.2.2.2.2.2.2.10 | 其他违法取证 |  | 0.5d | 2015-10-15 | 2015-10-15 | 87 |  |  | 55.62d |  |  |  |  |  |
| 89 | 1.2.2.2.2.2.2.11 | 数码照片取证 |  | 4d | 2015-11-04 | 2015-11-09 | 77 |  |  | 23.12d | 0d |  |  |  |  |
| 90 | 1.2.2.2.2.2.2.12 | 批量导入 |  | 4d | 2015-11-10 | 2015-11-13 | 89 |  |  | 23.12d | 0d |  |  |  |  |
| 91 | 1.2.2.2.2.2.2.13 | 数据上传 |  | 1d | 2015-11-16 | 2015-11-16 | 90 |  |  | 23.12d | 0d |  |  |  |  |
| 92 | 1.2.2.2.2.2.2.14 | 异常数据管理 |  | 1d | 2015-11-17 | 2015-11-17 | 91 |  |  | 23.12d | 0d |  |  |  |  |
| 93 | 1.2.2.2.2.2.2.15 | 特殊车辆数据管理 |  | 1d | 2015-11-18 | 2015-11-18 | 92 |  |  | 23.12d | 0d |  |  |  |  |
| 94 | 1.2.2.2.2.2.2.16 | 废弃数据管理 |  | 1d | 2015-11-19 | 2015-11-19 | 93 |  |  | 23.12d | 0d |  |  |  |  |

| ID | WBS | Task | Type | Duration | Start | Finish | Predecessors | Total slack | Free slack | Constraint | Resources | Work |
| --- | --- | --- | --- | --- | --- | --- | --- | --- | --- | --- | --- | --- |
| 95 | 1.2.2.2.2.2.3 | **统计分析** |  | 1d? | 2015-08-27 | 2015-08-28 |  | 0d |  |  | 李洁 | 8h |
| 96 | 1.2.2.2.2.2.3.1 | 车辆违章行为构成分析 | manual | 1d? | 2015-08-27 | 2015-08-28 |  |  |  |  |  |  |
| 97 | 1.2.2.2.2.2.3.2 | 重点违章行为统计 | manual | 1d? | 2015-08-27 | 2015-08-28 |  |  |  |  |  |  |
| 98 | 1.2.2.2.2.2.3.3 | 惯常违章车辆统计 | manual | 1d? | 2015-08-27 | 2015-08-28 |  |  |  |  |  |  |
| 99 | 1.2.2.2.2.2.3.4 | 违法趋势分析 | manual | 1d? | 2015-08-27 | 2015-08-28 |  |  |  |  |  |  |
| 100 | 1.2.2.2.2.2.3.5 | 采集统计 | manual | 1d? | 2015-08-27 | 2015-08-28 |  |  |  |  |  |  |
| 101 | 1.2.2.2.2.2.3.6 | 违章处理统计 | manual | 1d? | 2015-08-27 | 2015-08-28 |  |  |  |  |  |  |
| 102 | 1.2.2.2.2.2.4 | **配置管理** |  | 7d | 2015-11-20 | 2015-11-30 |  | 23.12d |  |  | 金海波 | 56h |
| 103 | 1.2.2.2.2.2.4.1 | 违法代码配置 |  | 1d | 2015-11-20 | 2015-11-20 | 94 | 23.12d | 0d |  |  |  |
| 104 | 1.2.2.2.2.2.4.2 | 违法系统代码配置 |  | 1d | 2015-11-23 | 2015-11-23 | 103 | 23.12d | 0d |  |  |  |
| 105 | 1.2.2.2.2.2.4.3 | 违法业务配置 |  | 1d | 2015-11-24 | 2015-11-24 | 104 | 23.12d | 0d |  |  |  |
| 106 | 1.2.2.2.2.2.4.4 | 模板配置 |  | 1d | 2015-11-25 | 2015-11-25 | 105 | 23.12d | 0d |  |  |  |
| 107 | 1.2.2.2.2.2.4.5 | 设备分组管理 |  | 2d | 2015-11-26 | 2015-11-27 | 106 | 23.12d | 0d |  |  |  |
| 108 | 1.2.2.2.2.2.4.6 | 白名单管理 |  | 1d | 2015-11-30 | 2015-11-30 | 107 | 23.12d |  |  |  |  |
| 109 | 1.2.2.2.2.2.5 | 视频监控取证 | milestone, inactive | 0d | 2015-08-27 | 2015-08-27 |  | 91d |  |  |  |  |
| 110 | 1.2.2.2.2.2.6 | 录像取证 | milestone, inactive, manual | 0d | 2015-08-27 | 2015-08-27 |  |  |  |  |  |  |
| 111 | 1.2.2.2.2.2.7 | **路况监控下的视频监控** |  | 7d | 2015-10-19 | 2015-10-27 |  | 23.12d | 0d |  |  |  |
| 112 | 1.2.2.2.2.2.7.1 | 实时监控 |  | 3d | 2015-10-19 | 2015-10-21 |  | 23.12d | 0d | start no earlier than 2015-10-19 |  |  |
| 113 | 1.2.2.2.2.2.7.2 | 视频回放 |  | 1d | 2015-10-22 | 2015-10-22 | 112 | 23.12d | 0d |  |  |  |
| 114 | 1.2.2.2.2.2.7.3 | 视频巡航 |  | 1d | 2015-10-23 | 2015-10-23 | 113 | 23.12d | 0d |  |  |  |
| 115 | 1.2.2.2.2.2.7.4 | 巡航配置 |  | 2d | 2015-10-26 | 2015-10-27 | 114 | 23.12d |  |  |  |  |
| 116 | 1.2.2.2.3 | **路况监控子系统** |  | 21.5d | 2015-09-10 | 2015-10-09 |  |  |  |  |  | 228h |
| 117 | 1.2.2.2.3.1 | **辖区机构管理** |  | 6d | 2015-10-08 | 2015-10-15 |  | 55.12d |  |  | 管亚飞 | 48h |
| 118 | 1.2.2.2.3.1.1 | 交警单位 |  | 2d | 2015-10-08 | 2015-10-09 |  | 59.12d |  | finish no earlier than 2015-10-09 |  |  |
| 119 | 1.2.2.2.3.1.2 | 执法服务站 |  | 1d | 2015-10-12 | 2015-10-12 |  | 58.12d |  | finish no earlier than 2015-10-12 |  |  |
| 120 | 1.2.2.2.3.1.3 | 车管所 |  | 1d | 2015-10-13 | 2015-10-13 |  | 57.12d |  | finish no earlier than 2015-10-13 |  |  |
| 121 | 1.2.2.2.3.1.4 | 交警辖区 |  | 1d | 2015-10-14 | 2015-10-14 |  | 56.12d |  | finish no earlier than 2015-10-14 |  |  |
| 122 | 1.2.2.2.3.1.5 | 交通岗亭 |  | 1d | 2015-10-15 | 2015-10-15 |  | 55.12d |  | finish no earlier than 2015-10-15 |  |  |
| 123 | 1.2.2.2.3.2 | 路况阈值配置 |  | 2d | 2015-10-15 | 2015-10-16 |  | 54.12d |  | finish no earlier than 2015-10-16 |  |  |
| 124 | 1.2.2.2.3.3 | 交通管制管理 |  | 3d | 2015-10-16 | 2015-10-20 |  | 52.12d |  | finish no earlier than 2015-10-20 |  |  |

| ID | WBS | Task | Type | Duration | Start | Finish | Total slack | Constraint | Resources | Work |
| --- | --- | --- | --- | --- | --- | --- | --- | --- | --- | --- |
| 125 | 1.2.2.2.3.4 | **路况综合监控** |  | 7.5d | 2015-10-13 | 2015-10-22 |  |  | 管亚飞 | 60h |
| 126 | 1.2.2.2.3.4.1 | **实时路况** |  | 2d | 2015-10-23 | 2015-10-26 | 48.12d |  |  |  |
| 127 | 1.2.2.2.3.4.1.1 | 路段状态查询服务 |  | 2d | 2015-10-23 | 2015-10-26 | 48.12d | finish no earlier than 2015-10-26 |  |  |
| 128 | 1.2.2.2.3.4.2 | **流量监控** |  | 5d | 2015-10-30 | 2015-11-05 | 40.12d |  |  |  |
| 129 | 1.2.2.2.3.4.2.1 | 流量预警事件管理 |  | 1d | 2015-10-30 | 2015-10-30 | 44.12d | finish no earlier than 2015-10-30 |  |  |
| 130 | 1.2.2.2.3.4.2.2 | 断面流量查询 |  | 1d | 2015-11-03 | 2015-11-03 | 42.12d | finish no earlier than 2015-11-03 |  |  |
| 131 | 1.2.2.2.3.4.2.3 | 区间流量查询 |  | 1d | 2015-11-05 | 2015-11-05 | 40.12d | finish no earlier than 2015-11-05 |  |  |
| 132 | 1.2.2.2.3.4.3 | **交通设备抓拍预警** |  | 1d | 2015-11-11 | 2015-11-11 | 36.12d |  |  |  |
| 133 | 1.2.2.2.3.4.3.1 | 交通事件管理 |  | 1d | 2015-11-11 | 2015-11-11 | 36.12d | finish no earlier than 2015-11-11 |  |  |
| 134 | 1.2.2.2.3.4.4 | **气象监控** |  | 1.5d | 2015-11-13 | 2015-11-16 | 33.12d |  |  |  |
| 135 | 1.2.2.2.3.4.4.1 | 气象预警事件管理 |  | 0.5d | 2015-11-13 | 2015-11-13 | 34.12d | finish no earlier than 2015-11-13 |  |  |
| 136 | 1.2.2.2.3.4.4.2 | 能见度信息查询 |  | 0.5d | 2015-11-13 | 2015-11-13 | 34.12d | finish no earlier than 2015-11-13 |  |  |
| 137 | 1.2.2.2.3.4.4.3 | 路感信息查询 |  | 0.5d | 2015-11-16 | 2015-11-16 | 33.12d | finish no earlier than 2015-11-16 |  |  |
| 138 | 1.2.2.2.3.5 | **交通事件处理** |  | 2d | 2015-11-17 | 2015-11-18 | 31.12d |  |  | 16h |
| 139 | 1.2.2.2.3.5.1 | 交通事件任务单 |  | 1d | 2015-11-17 | 2015-11-17 | 32.12d | finish no earlier than 2015-11-17 |  |  |
| 140 | 1.2.2.2.3.5.2 | **路况事件结果分析** |  | 2d | 2015-11-17 | 2015-11-18 | 31.12d |  |  | 16h |
| 141 | 1.2.2.2.3.5.2.1 | 事件信息查询 |  | 2d | 2015-11-17 | 2015-11-18 | 31.12d | finish no earlier than 2015-11-18 | 李磊 | 16h |
| 142 | 1.2.2.2.3.6 | **路况分析服务** |  | 13d | 2015-10-08 | 2015-10-26 |  |  | 李磊 | 104h |
| 143 | 1.2.2.2.3.6.1 | 断面1小时统计服务 | manual | 1d | 2015-10-26 | 2015-10-26 |  |  |  |  |
| 144 | 1.2.2.2.3.6.2 | 5分钟流量汇总(断面) | manual | 2d | 2015-10-23 | 2015-10-26 |  |  |  |  |
| 145 | 1.2.2.2.3.6.3 | 断面流量转区间流量服务 | manual | 1d | 2015-10-29 | 2015-10-29 |  |  |  |  |
| 146 | 1.2.2.2.3.6.4 | 路段状态分析服务 | manual | 2d | 2015-10-30 | 2015-11-02 |  |  |  |  |
| 147 | 1.2.2.2.3.6.5 | 流量突变分析服务 | manual | 1d | 2015-11-03 | 2015-11-04 |  |  |  |  |
| 148 | 1.2.2.2.3.6.6 | 区间饱和分析服务 | manual | 1d | 2015-11-05 | 2015-11-06 |  |  |  |  |
| 149 | 1.2.2.2.3.6.7 | 能见度分析服务 | manual | 3d | 2015-11-09 | 2015-11-11 |  |  |  |  |
| 150 | 1.2.2.2.3.6.8 | 路面温度过高分析 | manual | 1d | 2015-11-13 | 2015-11-15 |  |  |  |  |
| 151 | 1.2.2.2.3.6.9 | 路面积水、结冰分析 | manual | 1d | 2015-11-16 | 2015-11-17 |  |  |  |  |
| 152 | 1.2.2.2.3.6.10 | 大风预警分析 | manual | 1d | 2015-11-17 | 2015-11-18 |  |  |  |  |
| 153 | 1.2.2.2.3.6.11 | 区间旅行时间超长分析服务 | manual | 2d | 2015-11-19 | 2015-11-20 |  |  |  |  |
| 154 | 1.2.2.2.3.6.12 | 断面车速差分析服务 | manual | 2d | 2015-11-13 | 2015-11-15 |  |  |  |  |
| 155 | 1.2.2.2.3.6.13 | 白天大型车辆占比超标分析服务 | manual | 1d | 2015-11-23 | 2015-11-24 |  |  |  |  |

| ID | WBS | Task | Type | Duration | Start | Finish | Predecessors | Resources | Work |
| --- | --- | --- | --- | --- | --- | --- | --- | --- | --- |
| 156 | 1.2.2.2.4 | **车辆查控子系统** |  | 32d | 2015-10-26 | 2015-12-09 |  |  | 224h |
| 157 | 1.2.2.2.4.1 | **轨迹查询** |  | 4d | 2015-10-26 | 2015-10-30 |  |  | 32h |
| 158 | 1.2.2.2.4.1.1 | 过车查询 | manual | 2d | 2015-10-26 | 2015-10-28 |  | 左鹏 | 16h |
| 159 | 1.2.2.2.4.1.2 | 轨迹查询 | manual | 2d | 2015-10-28 | 2015-10-30 | 7 | 左鹏 | 16h |
| 160 | 1.2.2.2.4.2 | **实时监控** |  | 4d | 2015-11-11 | 2015-11-17 |  |  | 32h |
| 161 | 1.2.2.2.4.2.1 | 过车监控 | manual | 2d | 2015-11-11 | 2015-11-13 | 16 | 左鹏 | 16h |
| 162 | 1.2.2.2.4.2.2 | 报警监控 | manual | 2d | 2015-11-13 | 2015-11-17 |  | 左鹏 | 16h |
| 163 | 1.2.2.2.4.3 | **布控管理** |  | 6d | 2015-11-03 | 2015-11-11 |  |  | 48h |
| 164 | 1.2.2.2.4.3.1 | 假套牌车管理 | manual | 1d | 2015-11-03 | 2015-11-04 | 27 | 左鹏 | 8h |
| 165 | 1.2.2.2.4.3.2 | 车辆布控 | manual | 2d | 2015-11-04 | 2015-11-06 | 13 | 左鹏 | 16h |
| 166 | 1.2.2.2.4.3.3 | 布控报警管理 | manual | 2d | 2015-11-06 | 2015-11-10 | 14 | 左鹏 | 16h |
| 167 | 1.2.2.2.4.3.4 | 黄标车管理 | manual | 1d | 2015-11-10 | 2015-11-11 | 15 | 左鹏 | 8h |
| 168 | 1.2.2.2.4.4 | **车辆管理** |  | 3d | 2015-11-17 | 2015-11-20 |  |  | 24h |
| 169 | 1.2.2.2.4.4.1 | 重点车辆管理 | manual | 1d | 2015-11-17 | 2015-11-18 | 11 | 左鹏 | 8h |
| 170 | 1.2.2.2.4.4.2 | 危化品车登记 | manual | 1d | 2015-11-18 | 2015-11-19 | 18 | 左鹏 | 8h |
| 171 | 1.2.2.2.4.4.3 | 大车登记 | manual | 1d | 2015-11-19 | 2015-11-20 | 19 | 左鹏 | 8h |
| 172 | 1.2.2.2.4.5 | **二次分析预警** |  | 3d | 2015-11-23 | 2015-11-26 |  |  | 24h |
| 173 | 1.2.2.2.4.5.1 | 超高速 | manual | 1d | 2015-11-23 | 2015-11-24 | 29 | 左鹏 | 8h |
| 174 | 1.2.2.2.4.5.2 | 高速超低速 | manual | 1d | 2015-11-24 | 2015-11-25 | 22 | 左鹏 | 8h |
| 175 | 1.2.2.2.4.5.3 | 危化品车预警 | manual | 1d | 2015-11-25 | 2015-11-26 | 23 | 左鹏 | 8h |
| 176 | 1.2.2.2.4.6 | 配置管理 | manual | 2d | 2015-12-07 | 2015-12-09 | 4 | 左鹏 | 16h |
| 177 | 1.2.2.2.4.7 | **后台服务** |  | 16d | 2015-10-30 | 2015-11-23 |  |  | 24h |
| 178 | 1.2.2.2.4.7.1 | 假套牌车服务 | manual | 1d | 2015-10-30 | 2015-11-02 | 8 | 左鹏 | 8h |
| 179 | 1.2.2.2.4.7.2 | 超高速/高速超低速预警服务 | manual | 1d | 2015-11-19 | 2015-11-20 | 19 | 左鹏 | 8h |
| 180 | 1.2.2.2.4.7.3 | 危化品车服务 | manual | 1d | 2015-11-20 | 2015-11-23 | 28 | 左鹏 | 8h |
| 181 | 1.2.2.2.4.8 | 过车概况 | manual | 3d | 2015-11-26 | 2015-12-01 | 24 | 左鹏 | 24h |

| ID | WBS | Task | Type | Duration | Start | Finish | Resources | Work |
| --- | --- | --- | --- | --- | --- | --- | --- | --- |
| 182 | 1.2.2.2.5 | **系统管理** |  | 33d | 2015-08-27 | 2015-10-12 |  | 224h |
| 183 | 1.2.2.2.5.1 | **路网信息** |  | 10d | 2015-09-29 | 2015-10-12 |  | 64h |
| 184 | 1.2.2.2.5.1.1 | 道路信息 | manual | 2d | 2015-10-09 | 2015-10-12 |  |  |
| 185 | 1.2.2.2.5.1.2 | 点位信息 | manual | 2d | 2015-10-13 | 2015-10-14 | 左鹏 | 16h |
| 186 | 1.2.2.2.5.1.3 | 路口路段信息 | manual | 3d | 2015-11-10 | 2015-11-12 | 左鹏 | 24h |
| 187 | 1.2.2.2.5.1.4 | 道路区间信息 | manual | 3d | 2015-11-13 | 2015-11-17 | 左鹏 | 24h |
| 188 | 1.2.2.2.5.2 | 机构信息 | manual | 1d | 2015-12-01 | 2015-12-02 | 左鹏 | 8h |
| 189 | 1.2.2.2.5.3 | 用户信息 | manual | 1d | 2015-12-02 | 2015-12-03 | 左鹏 | 8h |
| 190 | 1.2.2.2.5.4 | **角色权限** |  | 4d | 2015-10-12 | 2015-10-16 |  | 48h |
| 191 | 1.2.2.2.5.4.1 | 角色管理 | manual | 3d | 2015-10-15 | 2015-10-19 | 左鹏 | 24h |
| 192 | 1.2.2.2.5.4.2 | 权限分配 | manual | 3d | 2015-10-20 | 2015-10-22 | 左鹏 | 24h |
| 193 | 1.2.2.2.5.5 | 系统代码 | manual | 3d | 2015-10-23 | 2015-10-27 | 王依凡 | 24h |
| 194 | 1.2.2.2.5.6 | 操作日志 | manual | 3d | 2015-10-28 | 2015-10-30 | 王依凡 | 24h |
| 195 | 1.2.2.2.5.7 | 系统公告 | manual | 3d | 2015-11-02 | 2015-11-04 | 王依凡 | 24h |
| 196 | 1.2.2.2.5.8 | 系统管理概况 | manual | 3d | 2015-11-05 | 2015-11-09 | 王依凡 | 24h |
| 197 | 1.2.2.2.6 | **统计分析子系统** |  | 29.5d | 2015-08-28 | 2015-10-08 |  | 228h |
| 198 | 1.2.2.2.6.1 | **过车分析** |  | 11d | 2015-09-24 | 2015-10-08 |  | 88h |
| 199 | 1.2.2.2.6.1.1 | 过车流量统计模板再评审、 需求范围确认 | manual | 1d | 2015-10-08 | 2015-10-08 | 李洁 | 8h |
| 200 | 1.2.2.2.6.1.2 | 过车流量统计中间表结构设计 | manual | 1d | 2015-10-09 | 2015-10-09 | 李洁 | 8h |
| 201 | 1.2.2.2.6.1.3 | 单点流量日周月统计模板制作 | manual | 1.5d | 2015-10-09 | 2015-10-10 | 李洁 | 12h |
| 202 | 1.2.2.2.6.1.4 | 辖区流量日周月统计模板制作 | manual | 1.5d | 2015-10-09 | 2015-10-12 | 李洁 | 12h |
| 203 | 1.2.2.2.6.1.5 | 道路流量日周月统计模板制作 | manual | 1.5d | 2015-10-13 | 2015-10-14 | 李洁 | 12h |
| 204 | 1.2.2.2.6.1.6 | 多监测点流量日周月统计模板制作 | manual | 1.5d | 2015-10-14 | 2015-10-15 | 李洁 | 12h |
| 205 | 1.2.2.2.6.1.7 | 过车数据ETL过程 | manual | 3d | 2015-10-15 | 2015-10-19 | 李洁 | 24h |

| ID | WBS | Task | Type | Duration | Start | Finish | Resources | Work |
| --- | --- | --- | --- | --- | --- | --- | --- | --- |
| 206 | 1.2.2.2.6.2 | **违法统计** |  | 8d | 2015-10-13 | 2015-10-22 |  | 64h |
| 207 | 1.2.2.2.6.2.1 | 违法统计模板设计 | manual | 1d | 2015-10-22 | 2015-10-22 | 李洁 | 8h |
| 208 | 1.2.2.2.6.2.2 | 违法统计模板评审、需求范围确认 | manual | 1d | 2015-10-23 | 2015-10-23 | 李洁 | 8h |
| 209 | 1.2.2.2.6.2.3 | 违法统计中间表结构设计 | manual | 1d | 2015-10-26 | 2015-10-26 | 李洁 | 8h |
| 210 | 1.2.2.2.6.2.4 | 违法采集整理日周月统计模板制作 | manual | 1.5d | 2015-10-26 | 2015-10-27 | 李洁 | 12h |
| 211 | 1.2.2.2.6.2.5 | 违法数据分析日周月统计模板制作 | manual | 1.5d | 2015-10-27 | 2015-10-28 | 李洁 | 12h |
| 212 | 1.2.2.2.6.2.6 | 违法数据ETL过程 | manual | 2d | 2015-10-29 | 2015-10-30 | 李洁 | 16h |
| 213 | 1.2.2.2.6.3 | **设备运维** |  | 7d | 2015-10-26 | 2015-11-03 |  | 48h |
| 214 | 1.2.2.2.6.3.1 | 设备运维统计模板设计 | manual | 1d | 2015-11-03 | 2015-11-03 |  |  |
| 215 | 1.2.2.2.6.3.2 | 设备运维评审、确认 | manual | 1d | 2015-11-04 | 2015-11-04 | 李洁 | 8h |
| 216 | 1.2.2.2.6.3.3 | 设备运维中间表结构设计 | manual | 1d | 2015-11-05 | 2015-11-05 | 李洁 | 8h |
| 217 | 1.2.2.2.6.3.4 | 设备运维周月年统计模板制作 | manual | 2d | 2015-11-05 | 2015-11-06 | 李洁 | 16h |
| 218 | 1.2.2.2.6.3.5 | 设备运维数据ETL过程 | manual | 2d | 2015-11-09 | 2015-11-10 | 李洁 | 16h |
| 219 | 1.2.2.2.6.4 | **web界面开发** |  | 3.5d | 2015-11-09 | 2015-11-12 |  | 28h |
| 220 | 1.2.2.2.6.4.1 | 单监测点流量查询界面 | manual | 0.5d | 2015-11-12 | 2015-11-12 | 李洁 | 4h |
| 221 | 1.2.2.2.6.4.2 | 辖区流量查询界面 | manual | 0.5d | 2015-11-12 | 2015-11-12 | 李洁 | 4h |
| 222 | 1.2.2.2.6.4.3 | 道路流量查询界面 | manual | 0.5d | 2015-11-13 | 2015-11-13 | 李洁 | 4h |
| 223 | 1.2.2.2.6.4.4 | 多监测点流量查询界面 | manual | 0.5d | 2015-11-13 | 2015-11-13 | 李洁 | 4h |
| 224 | 1.2.2.2.6.4.5 | 违法采集整理查询界面 | manual | 0.5d | 2015-11-16 | 2015-11-16 | 李洁 | 4h |
| 225 | 1.2.2.2.6.4.6 | 违法数据分析查询界面 | manual | 0.5d | 2015-11-16 | 2015-11-16 | 李洁 | 4h |
| 226 | 1.2.2.2.6.4.7 | 设备运维查询界面 | manual | 0.5d | 2015-11-17 | 2015-11-17 | 李洁 | 4h |
| 227 | 1.2.2.2.7 | 系统联调 | manual | 16d | 2015-12-10 | 2016-01-01 |  |  |
| 228 | 1.2.2.2.8 | **系统测试** |  | 18d | 2015-11-02 | 2015-11-26 | 金鑫 | 144h |
| 229 | 1.2.2.2.8.1 | 违法管理子系统测试 | manual | 1d? | 2015-10-31 | 2015-11-02 |  |  |
| 230 | 1.2.2.2.8.2 | 系统管理模块测试 | manual | 1d? | 2015-11-05 | 2015-11-06 |  |  |
| 231 | 1.2.2.2.8.3 | 设备管理子系统测试 | manual | 1d? | 2015-11-16 | 2015-11-17 |  |  |
| 232 | 1.2.2.2.8.4 | 车辆查控子系统测试 | manual | 1d? | 2015-11-26 | 2015-11-27 |  |  |
| 233 | 1.2.2.2.8.5 | 路况监控子系统测试 | manual | 1d? | 2015-11-27 | 2015-11-30 |  |  |
| 234 | 1.3 | v0.8满足昆武需求功能 | manual | 1d | 2015-08-27 | 2015-08-28 |  |  |
